# AI智能推荐食谱

Schedule from MS Project, 2020-03-16 to 2020-07-09, costs in ¥.

## Calendars

- 标准: Mon-Fri 08:00-12:00, 13:00-17:00; Sat-Sun off.

## Resources

| Resource |
| --- |
| 项目经理 |
| UI专家 |
| 需求专家 |
| 质量专家 |
| 测试员1 |
| 设计专家 |
| 测试员2 |
| 程序员1 |
| 程序员2 |
| 程序员3 |

## Schedule

| ID | WBS | Task | Type | Duration | Start | Finish | Predecessors | Total slack | Constraint | Resources | Work | Cost |
| --- | --- | --- | --- | --- | --- | --- | --- | --- | --- | --- | --- | --- |
| 1 | 1 | 项目启动 | milestone, manual | 0d | 2020-03-25 | 2020-03-25 |  |  |  |  |  |  |
| 2 | 2 | **启动** |  | 7d | 2020-03-16 | 2020-03-24 |  |  |  |  | 152h | 9,680 |
| 3 | 2.1 | 组件核心团队 |  | 1d | 2020-03-16 | 2020-03-16 |  | 3d |  | UI专家; 设计专家; 项目经理; 需求专家; 质量专家; 测试员1; 测试员2; 程序员1; 程序员2; 程序员3 | 80h | 4,160 |
| 4 | 2.2 | 干系人分析 |  | 2d | 2020-03-17 | 2020-03-18 |  | 1d | start no earlier than 2020-03-17 | 项目经理 [50%] | 8h | 800 |
| 5 | 2.3 | 里程碑计划 |  | 1d | 2020-03-19 | 2020-03-19 |  | 0d | start no earlier than 2020-03-19 | 项目经理 | 8h | 800 |
| 6 | 2.4 | 制定项目章程 |  | 2d | 2020-03-20 | 2020-03-23 | 3, 4, 5 | 0d |  | 项目经理 | 16h | 1,600 |
| 7 | 2.5 | 项目启动大会 |  | 1d | 2020-03-24 | 2020-03-24 | 6 | 0d |  | UI专家; 设计专家; 项目经理; 需求专家; 质量专家 | 40h | 2,320 |
| 8 | 3 | **规划** |  | 39d | 2020-03-25 | 2020-05-18 |  | 0d |  |  | 424h | 34,160 |
| 9 | 3.1 | **规划范围** |  | 11d | 2020-03-25 | 2020-04-08 |  | 0d |  |  | 136h | 9,200 |
| 10 | 3.1.1 | 制定需求说明书 |  | 5d | 2020-03-25 | 2020-03-31 | 7 | 0d |  | 需求专家 | 40h | 2,000 |
| 11 | 3.1.2 | 界面设计 |  | 3d | 2020-04-01 | 2020-04-03 | 10 | 0d |  | UI专家 | 24h | 1,200 |
| 12 | 3.1.3 | 详细计划说明书 |  | 3d | 2020-04-01 | 2020-04-03 | 10 | 0d |  | 设计专家 | 24h | 1,200 |
| 13 | 3.1.4 | 范围说明书 |  | 3d | 2020-03-27 | 2020-03-31 |  | 3d | start no earlier than 2020-03-27 | 项目经理 | 24h | 2,400 |
| 14 | 3.1.5 | 创建WBS |  | 2d | 2020-04-06 | 2020-04-07 | 11, 12, 13 | 0d |  | 项目经理 | 16h | 1,600 |
| 15 | 3.1.6 | 形成范围基准 |  | 1d | 2020-04-08 | 2020-04-08 | 14 | 0d |  | 项目经理 | 8h | 800 |
| 16 | 3.2 | **规划时间** |  | 9d | 2020-04-09 | 2020-04-21 |  | 0d |  |  | 56h | 5,600 |
| 17 | 3.2.1 | 排列工作包顺序 |  | 1d | 2020-04-09 | 2020-04-09 | 15 | 0d |  | 项目经理 | 8h | 800 |
| 18 | 3.2.2 | 估算资源 |  | 2d | 2020-04-10 | 2020-04-13 | 17 | 0d |  | 项目经理 | 16h | 1,600 |
| 19 | 3.2.3 | 估算持续时间 |  | 2d | 2020-04-14 | 2020-04-15 | 18 | 0d |  | 项目经理 | 16h | 1,600 |
| 20 | 3.2.4 | 制定进度计划 |  | 1d | 2020-04-20 | 2020-04-20 | 19 | 0d |  | 项目经理 | 8h | 800 |
| 21 | 3.2.5 | 形成进度基准 |  | 1d | 2020-04-21 | 2020-04-21 | 20 | 0d |  | 项目经理 | 8h | 800 |
| 22 | 3.3 | **规划成本** |  | 6d | 2020-04-20 | 2020-04-27 |  |  |  |  | 32h | 3,200 |
| 23 | 3.3.1 | 项目成本估算 |  | 2d | 2020-04-22 | 2020-04-23 | 21 | 0d |  | 项目经理 | 16h | 1,600 |
| 24 | 3.3.2 | 项目预算 |  | 1d | 2020-04-24 | 2020-04-24 | 23 | 0d |  | 项目经理 | 8h | 800 |
| 25 | 3.3.3 | 形成范围基准 |  | 1d | 2020-04-27 | 2020-04-27 | 24 | 0d |  | 项目经理 | 8h | 800 |

| ID | WBS | Task | Duration | Start | Finish | Predecessors | Total slack | Free slack | Resources | Work | Cost |
| --- | --- | --- | --- | --- | --- | --- | --- | --- | --- | --- | --- |
| 26 | 3.4 | **规划质量** | 8d | 2020-04-09 | 2020-04-20 |  | 16d | 14d |  | 64h | 2,560 |
| 27 | 3.4.1 | 制定测试计划 | 2d | 2020-04-09 | 2020-04-10 | 15 | 16d | 0d | 质量专家 | 16h | 640 |
| 28 | 3.4.2 | 制定测试用例 | 6d | 2020-04-13 | 2020-04-20 | 27 | 16d |  | 质量专家 | 48h | 1,920 |
| 29 | 3.5 | **规划人力资源** | 9d | 2020-04-28 | 2020-05-08 |  | 0d |  |  | 32h | 3,200 |
| 30 | 3.5.1 | 制定人力资源计划 | 2d | 2020-04-28 | 2020-04-29 | 18 | 0d |  | 项目经理 | 16h | 1,600 |
| 31 | 3.5.2 | 制定人员配备管理计划 | 2d | 2020-05-07 | 2020-05-08 | 30 | 0d |  | 项目经理 | 16h | 1,600 |
| 32 | 3.6 | **规划沟通** | 2d | 2020-05-15 | 2020-05-18 |  | 0d |  |  | 16h | 1,600 |
| 33 | 3.6.1 | 制定沟通管理计划 | 2d | 2020-05-15 | 2020-05-18 | 31 | 0d |  | 项目经理 | 16h | 1,600 |
| 34 | 3.7 | **规划采购** | 15d | 2020-04-16 | 2020-05-06 |  | 4d | 2d |  | 56h | 5,600 |
| 35 | 3.7.1 | 自制外购分析 | 2d | 2020-04-16 | 2020-04-17 | 18 | 5d | 0d | 项目经理 | 16h | 1,600 |
| 36 | 3.7.2 | 制定采购文件 | 5d | 2020-04-30 | 2020-05-06 | 35 | 4d |  | 项目经理 | 40h | 4,000 |
| 37 | 3.8 | **规划风险** | 3d | 2020-05-11 | 2020-05-13 |  | 2d |  |  | 24h | 2,400 |
| 38 | 3.8.1 | 识别风险 | 1d | 2020-05-11 | 2020-05-11 | 16, 22, 26, 29, 34 | 2d | 0d | 项目经理 | 8h | 800 |
| 39 | 3.8.2 | 风险分析 | 1d | 2020-05-12 | 2020-05-12 | 38 | 2d | 0d | 项目经理 | 8h | 800 |
| 40 | 3.8.3 | 制定风险登记册 | 1d | 2020-05-13 | 2020-05-13 | 39 | 2d | 0d | 项目经理 | 8h | 800 |
| 41 | 3.9 | 规划整合 | 1d | 2020-05-14 | 2020-05-14 | 40 | 2d |  | 项目经理 | 8h | 800 |
| 42 | 4 | **执行与监控** | 35d | 2020-05-19 | 2020-07-06 |  | 0d |  |  | 1224h | 72,960 |
| 43 | 4.1 | 组建项目团队 | 3d | 2020-05-19 | 2020-05-21 | 8 | 0d |  | UI专家; 设计专家; 项目经理; 需求专家; 质量专家 | 120h | 6,960 |
| 44 | 4.2 | **项目执行** | 28d | 2020-05-22 | 2020-06-30 |  | 0d |  |  | 384h | 19,200 |
| 45 | 4.2.1 | **用户模块** | 28d | 2020-05-22 | 2020-06-30 |  | 0d |  |  | 224h | 11,200 |
| 46 | 4.2.1.1 | **登录注册** | 2d | 2020-06-11 | 2020-06-12 |  | 10d |  |  | 16h | 800 |
| 47 | 4.2.1.1.1 | 账号密码注册 | 1d | 2020-06-11 | 2020-06-11 | 43 | 10d | 0d | 程序员1 | 8h | 400 |
| 48 | 4.2.1.1.2 | 基本信息勾选 | 1d | 2020-06-12 | 2020-06-12 | 47 | 10d | 0d | 程序员1 | 8h | 400 |
| 49 | 4.2.1.2 | **首页** | 2d | 2020-06-15 | 2020-06-16 |  | 10d |  |  | 16h | 800 |
| 50 | 4.2.1.2.1 | 食物搜索 | 1d | 2020-06-15 | 2020-06-15 | 48 | 10d | 0d | 程序员2 | 8h | 400 |
| 51 | 4.2.1.2.2 | 食物浏览 | 1d | 2020-06-16 | 2020-06-16 | 50 | 10d |  | 程序员2 | 8h | 400 |

| ID | WBS | Task | Duration | Start | Finish | Predecessors | Total slack | Free slack | Resources | Work | Cost |
| --- | --- | --- | --- | --- | --- | --- | --- | --- | --- | --- | --- |
| 52 | 4.2.1.3 | **食谱** | 28d | 2020-05-22 | 2020-06-30 |  | 0d |  |  | 176h | 8,800 |
| 53 | 4.2.1.3.1 | 打卡登记 | 1d | 2020-05-22 | 2020-05-22 | 43 | 0d |  | 程序员1 | 8h | 400 |
| 54 | 4.2.1.3.2 | 食物推荐 | 1d | 2020-05-25 | 2020-05-25 | 53 | 0d |  | 程序员1 | 8h | 400 |
| 55 | 4.2.1.3.3 | 食物热量识别 | 20d | 2020-05-26 | 2020-06-30 | 54 | 0d |  | 程序员3 | 160h | 8,000 |
| 56 | 4.2.1.4 | **我的** | 2d | 2020-06-04 | 2020-06-05 |  | 17d |  |  | 16h | 800 |
| 57 | 4.2.1.4.1 | 个人配置 | 1d | 2020-06-04 | 2020-06-04 | 43 | 17d | 0d | 程序员2 | 8h | 400 |
| 58 | 4.2.1.4.2 | 软件更新 | 1d | 2020-06-05 | 2020-06-05 | 57 | 17d |  | 程序员2 | 8h | 400 |
| 59 | 4.2.2 | **商家模块** | 16d | 2020-05-26 | 2020-06-16 |  | 10d |  |  | 96h | 4,800 |
| 60 | 4.2.2.1 | 注册录入 | 1d | 2020-05-26 | 2020-05-26 | 43 | 10d | 0d | 程序员1 | 8h | 400 |
| 61 | 4.2.2.2 | 美食管理 | 1d | 2020-05-27 | 2020-05-27 | 60 | 10d | 0d | 程序员1 | 8h | 400 |
| 62 | 4.2.2.3 | 价格提交 | 2d | 2020-05-28 | 2020-05-29 | 61 | 10d | 0d | 程序员1 | 16h | 800 |
| 63 | 4.2.2.4 | 客服连线 | 1d | 2020-06-01 | 2020-06-01 | 62 | 10d | 0d | 程序员1 | 8h | 400 |
| 64 | 4.2.2.5 | 订单处理 | 3d | 2020-06-08 | 2020-06-10 | 63 | 10d | 0d | 程序员1 | 24h | 1,200 |
| 65 | 4.2.2.6 | 统计 | 2d | 2020-06-11 | 2020-06-12 | 64 | 10d | 0d | 程序员3 | 16h | 800 |
| 66 | 4.2.2.7 | 商家配置 | 2d | 2020-06-15 | 2020-06-16 | 65 | 10d |  | 程序员3 | 16h | 800 |
| 67 | 4.2.3 | **管理员模块** | 14d | 2020-05-22 | 2020-06-10 |  | 12d |  |  | 64h | 3,200 |
| 68 | 4.2.3.1 | 商家审核 | 2d | 2020-05-22 | 2020-05-25 | 43 | 12d | 0d | 程序员2 | 16h | 800 |
| 69 | 4.2.3.2 | 促销活动 | 2d | 2020-05-26 | 2020-05-27 | 68 | 12d | 0d | 程序员2 | 16h | 800 |
| 70 | 4.2.3.3 | 统计分析 | 1d | 2020-05-28 | 2020-05-28 | 69 | 12d | 0d | 程序员2 | 8h | 400 |
| 71 | 4.2.3.4 | 备份 | 3d | 2020-06-08 | 2020-06-10 | 70 | 14d |  | 程序员2 | 24h | 1,200 |
| 72 | 4.3 | **项目监控** | 25d | 2020-05-22 | 2020-06-25 |  | 10d |  |  | 208h | 11,440 |
| 73 | 4.3.1 | 各项指标监控 | 1d | 2020-05-22 | 2020-05-22 | 43 | 31d | 0d | UI专家; 测试员1; 设计专家; 项目经理; 需求专家; 质量专家 | 48h | 2,640 |
| 74 | 4.3.2 | 监控评审 | 2d | 2020-05-25 | 2020-05-26 | 73 | 31d | 0d | UI专家; 设计专家; 项目经理; 需求专家; 质量专家 | 40h | 2,320 |
| 75 | 4.3.3 | 变更评审 | 1d | 2020-05-27 | 2020-05-27 | 74 | 31d |  | UI专家; 设计专家; 项目经理; 需求专家; 质量专家 | 40h | 2,320 |
| 76 | 4.3.4 | 例会 | 5d | 2020-05-22 | 2020-06-25 | 43 | 10d |  | UI专家; 测试员1; 测试员2; 程序员1; 程序员2; 程序员3; 设计专家; 项目经理; 需求专家; 质量专家 | 80h | 4,160 |

| ID | WBS | Task | Duration | Start | Finish | Predecessors | Total slack | Resources | Work | Cost |
| --- | --- | --- | --- | --- | --- | --- | --- | --- | --- | --- |
| 77 | 4.4 | **管理干系人** | 3d | 2020-06-26 | 2020-06-30 |  | 7d |  | 24h | 2,400 |
| 78 | 4.4.1 | 发布项目信息 | 1d | 2020-06-26 | 2020-06-26 | 43 | 9d | 项目经理 | 8h | 800 |
| 79 | 4.4.2 | 报告监控指标 | 1d | 2020-06-29 | 2020-06-29 | 43 | 8d | 项目经理 | 8h | 800 |
| 80 | 4.4.3 | 干系人沟通 | 1d | 2020-06-30 | 2020-06-30 | 43 | 7d | 项目经理 | 8h | 800 |
| 81 | 4.5 | **团队建设** | 30d | 2020-05-25 | 2020-07-03 |  | 4d |  | 240h | 12,480 |
| 82 | 4.5.1 | 培训 | 6d | 2020-05-25 | 2020-07-01 | 43 | 6d | UI专家; 测试员1; 测试员2; 程序员1; 程序员2; 程序员3; 设计专家; 项目经理; 需求专家; 质量专家 | 80h | 4,160 |
| 83 | 4.5.2 | 娱乐活动 | 7d | 2020-05-26 | 2020-07-02 | 43 | 5d | UI专家; 测试员1; 测试员2; 程序员1; 程序员2; 程序员3; 设计专家; 项目经理; 需求专家; 质量专家 | 80h | 4,160 |
| 84 | 4.5.3 | 沟通 | 7d | 2020-05-27 | 2020-07-03 | 43 | 4d | UI专家; 测试员1; 测试员2; 程序员1; 程序员2; 程序员3; 设计专家; 项目经理; 需求专家; 质量专家 | 80h | 4,160 |
| 85 | 4.6 | 采购 | 20d | 2020-05-28 | 2020-06-24 | 43 | 11d | 项目经理 | 160h | 16,000 |
| 86 | 4.7 | 项目验收 | 3d | 2020-07-01 | 2020-07-06 | 44 | 0d | UI专家; 测试员1; 测试员2; 程序员1; 程序员2; 程序员3; 设计专家; 项目经理; 需求专家; 质量专家 | 88h | 4,480 |
| 87 | 5 | **收尾** | 3d | 2020-07-07 | 2020-07-09 |  | 0d |  | 168h | 9,120 |
| 88 | 5.1 | 项目终验 | 1d | 2020-07-07 | 2020-07-07 | 86 | 2d | UI专家; 测试员1; 测试员2; 程序员1; 程序员2; 程序员3; 设计专家; 项目经理; 需求专家; 质量专家 | 80h | 4,160 |
| 89 | 5.2 | 结束采购 | 1d | 2020-07-08 | 2020-07-08 | 86 | 1d | 项目经理 | 8h | 800 |
| 90 | 5.3 | 项目内部收尾 | 2d | 2020-07-08 | 2020-07-09 | 86 | 0d | UI专家; 测试员1; 测试员2; 程序员1; 程序员2; 程序员3; 设计专家; 项目经理; 需求专家; 质量专家 | 80h | 4,160 |
