# AI智能推荐食谱

Schedule from MS Project, 2020-03-16 to 2020-07-09, costs in ¥.

## Calendars

- 标准: Mon-Fri 08:00-12:00, 13:00-17:00; Sat-Sun off.

## Resources

| Resource |
| --- |
| 项目经理 |
| UI专家 |
| 需求专家 |
| 质量专家 |
| 测试员1 |
| 设计专家 |
| 测试员2 |
| 程序员1 |
| 程序员2 |
| 程序员3 |

## Schedule

| ID | WBS | Task | Duration | Start | Finish | Predecessors | Total slack | Constraint | Resources | Work | Cost |
| --- | --- | --- | --- | --- | --- | --- | --- | --- | --- | --- | --- |
| 1 | 1 | **启动** | 7d | 2020-03-16 | 2020-03-24 |  |  |  |  | 112h | 4,800 |
| 2 | 1.1 | 组件核心团队 | 1d | 2020-03-16 | 2020-03-16 |  | 3d |  | UI专家; 设计专家; 项目经理; 需求专家; 质量专家 | 40h | 800 |
| 3 | 1.2 | 干系人分析 | 2d | 2020-03-17 | 2020-03-18 |  | 1d | start no earlier than 2020-03-17 | 项目经理 [50%] | 8h | 800 |
| 4 | 1.3 | 里程碑计划 | 1d | 2020-03-19 | 2020-03-19 |  | 0d | start no earlier than 2020-03-19 | 项目经理 | 8h | 800 |
| 5 | 1.4 | 制定项目章程 | 2d | 2020-03-20 | 2020-03-23 | 2, 3, 4 | 0d |  | 项目经理 | 16h | 1,600 |
| 6 | 1.5 | 项目启动大会 | 1d | 2020-03-24 | 2020-03-24 | 5 | 0d |  | UI专家; 设计专家; 项目经理; 需求专家; 质量专家 | 40h | 800 |
| 7 | 2 | **规划** | 39d | 2020-03-25 | 2020-05-18 |  | 0d |  |  | 424h | 27,200 |
| 8 | 2.1 | **规划范围** | 11d | 2020-03-25 | 2020-04-08 |  | 0d |  |  | 136h | 4,800 |
| 9 | 2.1.1 | 制定需求说明书 | 5d | 2020-03-25 | 2020-03-31 | 6 | 0d |  | 需求专家 | 40h |  |
| 10 | 2.1.2 | 界面设计 | 3d | 2020-04-01 | 2020-04-03 | 9 | 0d |  | UI专家 | 24h |  |
| 11 | 2.1.3 | 详细计划说明书 | 3d | 2020-04-01 | 2020-04-03 | 9 | 0d |  | 设计专家 | 24h |  |
| 12 | 2.1.4 | 范围说明书 | 3d | 2020-03-27 | 2020-03-31 |  | 3d | start no earlier than 2020-03-27 | 项目经理 | 24h | 2,400 |
| 13 | 2.1.5 | 创建WBS | 2d | 2020-04-06 | 2020-04-07 | 10, 11, 12 | 0d |  | 项目经理 | 16h | 1,600 |
| 14 | 2.1.6 | 形成范围基准 | 1d | 2020-04-08 | 2020-04-08 | 13 | 0d |  | 项目经理 | 8h | 800 |
| 15 | 2.2 | **规划时间** | 9d | 2020-04-09 | 2020-04-21 |  | 0d |  |  | 56h | 5,600 |
| 16 | 2.2.1 | 排列工作包顺序 | 1d | 2020-04-09 | 2020-04-09 | 14 | 0d |  | 项目经理 | 8h | 800 |
| 17 | 2.2.2 | 估算资源 | 2d | 2020-04-10 | 2020-04-13 | 16 | 0d |  | 项目经理 | 16h | 1,600 |
| 18 | 2.2.3 | 估算持续时间 | 2d | 2020-04-14 | 2020-04-15 | 17 | 0d |  | 项目经理 | 16h | 1,600 |
| 19 | 2.2.4 | 制定进度计划 | 1d | 2020-04-20 | 2020-04-20 | 18 | 0d |  | 项目经理 | 8h | 800 |
| 20 | 2.2.5 | 形成进度基准 | 1d | 2020-04-21 | 2020-04-21 | 19 | 0d |  | 项目经理 | 8h | 800 |
| 21 | 2.3 | **规划成本** | 6d | 2020-04-20 | 2020-04-27 |  |  |  |  | 32h | 3,200 |
| 22 | 2.3.1 | 项目成本估算 | 2d | 2020-04-22 | 2020-04-23 | 20 | 0d |  | 项目经理 | 16h | 1,600 |
| 23 | 2.3.2 | 项目预算 | 1d | 2020-04-24 | 2020-04-24 | 22 | 0d |  | 项目经理 | 8h | 800 |
| 24 | 2.3.3 | 形成范围基准 | 1d | 2020-04-27 | 2020-04-27 | 23 | 0d |  | 项目经理 | 8h | 800 |

| ID | WBS | Task | Duration | Start | Finish | Predecessors | Total slack | Free slack | Resources | Work | Cost |
| --- | --- | --- | --- | --- | --- | --- | --- | --- | --- | --- | --- |
| 25 | 2.4 | **规划质量** | 8d | 2020-04-09 | 2020-04-20 |  | 16d | 14d |  | 64h |  |
| 26 | 2.4.1 | 制定测试计划 | 2d | 2020-04-09 | 2020-04-10 | 14 | 16d | 0d | 质量专家 | 16h |  |
| 27 | 2.4.2 | 制定测试用例 | 6d | 2020-04-13 | 2020-04-20 | 26 | 16d |  | 质量专家 | 48h |  |
| 28 | 2.5 | **规划人力资源** | 9d | 2020-04-28 | 2020-05-08 |  | 0d |  |  | 32h | 3,200 |
| 29 | 2.5.1 | 制定人力资源计划 | 2d | 2020-04-28 | 2020-04-29 | 17 | 0d |  | 项目经理 | 16h | 1,600 |
| 30 | 2.5.2 | 制定人员配备管理计划 | 2d | 2020-05-07 | 2020-05-08 | 29 | 0d |  | 项目经理 | 16h | 1,600 |
| 31 | 2.6 | **规划沟通** | 2d | 2020-05-15 | 2020-05-18 |  | 0d |  |  | 16h | 1,600 |
| 32 | 2.6.1 | 制定沟通管理计划 | 2d | 2020-05-15 | 2020-05-18 | 30 | 0d |  | 项目经理 | 16h | 1,600 |
| 33 | 2.7 | **规划采购** | 15d | 2020-04-16 | 2020-05-06 |  | 4d | 2d |  | 56h | 5,600 |
| 34 | 2.7.1 | 自制外购分析 | 2d | 2020-04-16 | 2020-04-17 | 17 | 5d | 0d | 项目经理 | 16h | 1,600 |
| 35 | 2.7.2 | 制定采购文件 | 5d | 2020-04-30 | 2020-05-06 | 34 | 4d |  | 项目经理 | 40h | 4,000 |
| 36 | 2.8 | **规划风险** | 3d | 2020-05-11 | 2020-05-13 |  | 2d |  |  | 24h | 2,400 |
| 37 | 2.8.1 | 识别风险 | 1d | 2020-05-11 | 2020-05-11 | 15, 21, 25, 28, 33 | 2d | 0d | 项目经理 | 8h | 800 |
| 38 | 2.8.2 | 风险分析 | 1d | 2020-05-12 | 2020-05-12 | 37 | 2d | 0d | 项目经理 | 8h | 800 |
| 39 | 2.8.3 | 制定风险登记册 | 1d | 2020-05-13 | 2020-05-13 | 38 | 2d | 0d | 项目经理 | 8h | 800 |
| 40 | 2.9 | 规划整合 | 1d | 2020-05-14 | 2020-05-14 | 39 | 2d |  | 项目经理 | 8h | 800 |
| 41 | 3 | **执行与监控** | 35d | 2020-05-19 | 2020-07-06 |  | 0d |  |  | 1216h | 27,200 |
| 42 | 3.1 | 组建项目团队 | 3d | 2020-05-19 | 2020-05-21 | 7 | 0d |  | UI专家; 设计专家; 项目经理; 需求专家; 质量专家 | 120h | 2,400 |
| 43 | 3.2 | **项目执行** | 28d | 2020-05-22 | 2020-06-30 |  | 0d |  |  | 384h |  |
| 44 | 3.2.1 | **用户模块** | 28d | 2020-05-22 | 2020-06-30 |  | 0d |  |  | 224h |  |
| 45 | 3.2.1.1 | **登录注册** | 2d | 2020-06-11 | 2020-06-12 |  | 10d |  |  | 16h |  |
| 46 | 3.2.1.1.1 | 账号密码注册 | 1d | 2020-06-11 | 2020-06-11 | 42 | 10d | 0d | 程序员1 | 8h |  |
| 47 | 3.2.1.1.2 | 基本信息勾选 | 1d | 2020-06-12 | 2020-06-12 | 46 | 10d | 0d | 程序员1 | 8h |  |
| 48 | 3.2.1.2 | **首页** | 2d | 2020-06-15 | 2020-06-16 |  | 10d |  |  | 16h |  |
| 49 | 3.2.1.2.1 | 食物搜索 | 1d | 2020-06-15 | 2020-06-15 | 47 | 10d | 0d | 程序员2 | 8h |  |
| 50 | 3.2.1.2.2 | 食物浏览 | 1d | 2020-06-16 | 2020-06-16 | 49 | 10d |  | 程序员2 | 8h |  |

| ID | WBS | Task | Duration | Start | Finish | Predecessors | Total slack | Free slack | Resources | Work | Cost |
| --- | --- | --- | --- | --- | --- | --- | --- | --- | --- | --- | --- |
| 51 | 3.2.1.3 | **食谱** | 28d | 2020-05-22 | 2020-06-30 |  | 0d |  |  | 176h |  |
| 52 | 3.2.1.3.1 | 打卡登记 | 1d | 2020-05-22 | 2020-05-22 | 42 | 0d |  | 程序员1 | 8h |  |
| 53 | 3.2.1.3.2 | 食物推荐 | 1d | 2020-05-25 | 2020-05-25 | 52 | 0d |  | 程序员1 | 8h |  |
| 54 | 3.2.1.3.3 | 食物热量识别 | 20d | 2020-05-26 | 2020-06-30 | 53 | 0d |  | 程序员3 | 160h |  |
| 55 | 3.2.1.4 | **我的** | 2d | 2020-06-04 | 2020-06-05 |  | 17d |  |  | 16h |  |
| 56 | 3.2.1.4.1 | 个人配置 | 1d | 2020-06-04 | 2020-06-04 | 42 | 17d | 0d | 程序员2 | 8h |  |
| 57 | 3.2.1.4.2 | 软件更新 | 1d | 2020-06-05 | 2020-06-05 | 56 | 17d |  | 程序员2 | 8h |  |
| 58 | 3.2.2 | **商家模块** | 16d | 2020-05-26 | 2020-06-16 |  | 10d |  |  | 96h |  |
| 59 | 3.2.2.1 | 注册录入 | 1d | 2020-05-26 | 2020-05-26 | 42 | 10d | 0d | 程序员1 | 8h |  |
| 60 | 3.2.2.2 | 美食管理 | 1d | 2020-05-27 | 2020-05-27 | 59 | 10d | 0d | 程序员1 | 8h |  |
| 61 | 3.2.2.3 | 价格提交 | 2d | 2020-05-28 | 2020-05-29 | 60 | 10d | 0d | 程序员1 | 16h |  |
| 62 | 3.2.2.4 | 客服连线 | 1d | 2020-06-01 | 2020-06-01 | 61 | 10d | 0d | 程序员1 | 8h |  |
| 63 | 3.2.2.5 | 订单处理 | 3d | 2020-06-08 | 2020-06-10 | 62 | 10d | 0d | 程序员1 | 24h |  |
| 64 | 3.2.2.6 | 统计 | 2d | 2020-06-11 | 2020-06-12 | 63 | 10d | 0d | 程序员3 | 16h |  |
| 65 | 3.2.2.7 | 商家配置 | 2d | 2020-06-15 | 2020-06-16 | 64 | 10d |  | 程序员3 | 16h |  |
| 66 | 3.2.3 | **管理员模块** | 14d | 2020-05-22 | 2020-06-10 |  | 12d |  |  | 64h |  |
| 67 | 3.2.3.1 | 商家审核 | 2d | 2020-05-22 | 2020-05-25 | 42 | 12d | 0d | 程序员2 | 16h |  |
| 68 | 3.2.3.2 | 促销活动 | 2d | 2020-05-26 | 2020-05-27 | 67 | 12d | 0d | 程序员2 | 16h |  |
| 69 | 3.2.3.3 | 统计分析 | 1d | 2020-05-28 | 2020-05-28 | 68 | 12d | 0d | 程序员2 | 8h |  |
| 70 | 3.2.3.4 | 备份 | 3d | 2020-06-08 | 2020-06-10 | 69 | 14d |  | 程序员2 | 24h |  |
| 71 | 3.3 | **项目监控** | 25d | 2020-05-22 | 2020-06-25 |  | 10d |  |  | 208h | 3,200 |
| 72 | 3.3.1 | 各项指标监控 | 1d | 2020-05-22 | 2020-05-22 | 42 | 31d | 0d | UI专家; 测试员1; 设计专家; 项目经理; 需求专家; 质量专家 | 48h | 800 |
| 73 | 3.3.2 | 监控评审 | 2d | 2020-05-25 | 2020-05-26 | 72 | 31d | 0d | UI专家; 设计专家; 项目经理; 需求专家; 质量专家 | 40h | 800 |
| 74 | 3.3.3 | 变更评审 | 1d | 2020-05-27 | 2020-05-27 | 73 | 31d |  | UI专家; 设计专家; 项目经理; 需求专家; 质量专家 | 40h | 800 |
| 75 | 3.3.4 | 例会 | 5d | 2020-05-22 | 2020-06-25 | 42 | 10d |  | UI专家; 测试员1; 测试员2; 程序员1; 程序员2; 程序员3; 设计专家; 项目经理; 需求专家; 质量专家 | 80h | 800 |

| ID | WBS | Task | Duration | Start | Finish | Predecessors | Total slack | Resources | Work | Cost |
| --- | --- | --- | --- | --- | --- | --- | --- | --- | --- | --- |
| 76 | 3.4 | **管理干系人** | 3d | 2020-06-26 | 2020-06-30 |  | 7d |  | 24h | 2,400 |
| 77 | 3.4.1 | 发布项目信息 | 1d | 2020-06-26 | 2020-06-26 | 42 | 9d | 项目经理 | 8h | 800 |
| 78 | 3.4.2 | 报告监控指标 | 1d | 2020-06-29 | 2020-06-29 | 42 | 8d | 项目经理 | 8h | 800 |
| 79 | 3.4.3 | 干系人沟通 | 1d | 2020-06-30 | 2020-06-30 | 42 | 7d | 项目经理 | 8h | 800 |
| 80 | 3.5 | **团队建设** | 30d | 2020-05-25 | 2020-07-03 |  | 4d |  | 240h | 2,400 |
| 81 | 3.5.1 | 培训 | 6d | 2020-05-25 | 2020-07-01 | 42 | 6d | UI专家; 测试员1; 测试员2; 程序员1; 程序员2; 程序员3; 设计专家; 项目经理; 需求专家; 质量专家 | 80h | 800 |
| 82 | 3.5.2 | 娱乐活动 | 7d | 2020-05-26 | 2020-07-02 | 42 | 5d | UI专家; 测试员1; 测试员2; 程序员1; 程序员2; 程序员3; 设计专家; 项目经理; 需求专家; 质量专家 | 80h | 800 |
| 83 | 3.5.3 | 沟通 | 7d | 2020-05-27 | 2020-07-03 | 42 | 4d | UI专家; 测试员1; 测试员2; 程序员1; 程序员2; 程序员3; 设计专家; 项目经理; 需求专家; 质量专家 | 80h | 800 |
| 84 | 3.6 | 采购 | 20d | 2020-05-28 | 2020-06-24 | 42 | 11d | 项目经理 | 160h | 16,000 |
| 85 | 3.7 | 项目验收 | 2d | 2020-07-01 | 2020-07-06 | 43 | 0d | UI专家; 测试员1; 测试员2; 程序员1; 程序员2; 程序员3; 设计专家; 项目经理; 需求专家; 质量专家 | 80h | 800 |
| 86 | 4 | **收尾** | 3d | 2020-07-07 | 2020-07-09 |  | 0d |  | 168h | 2,400 |
| 87 | 4.1 | 项目终验 | 1d | 2020-07-07 | 2020-07-07 | 85 | 2d | UI专家; 测试员1; 测试员2; 程序员1; 程序员2; 程序员3; 设计专家; 项目经理; 需求专家; 质量专家 | 80h | 800 |
| 88 | 4.2 | 结束采购 | 1d | 2020-07-08 | 2020-07-08 | 85 | 1d | 项目经理 | 8h | 800 |
| 89 | 4.3 | 项目内部收尾 | 2d | 2020-07-08 | 2020-07-09 | 85 | 0d | UI专家; 测试员1; 测试员2; 程序员1; 程序员2; 程序员3; 设计专家; 项目经理; 需求专家; 质量专家 | 80h | 800 |
